Schedule from Planner, 2022-07-01 to 2023-07-20.

## Calendars

- Default: Mon-Fri 08:00-12:00, 13:00-17:00; Sat-Sun off.

## Schedule

| ID | Task | Type | Duration | Start | Finish | Predecessors | Constraint | Work |
| --- | --- | --- | --- | --- | --- | --- | --- | --- |
| 1 | RSE training |  | 40d | 2022-07-01 | 2022-08-25 |  | must start on 2022-07-01 | 8h |
| 2 | 2.1.1 build Bonsai ML API |  | 40d | 2022-08-26 | 2022-10-20 | 1 |  | 8h |
| 3 | 2.1.2 C#-Python communication |  | 10d | 2022-10-21 | 2022-11-03 | 2 |  | 8h |
| 4 | 2.1.2 C#-R communication |  | 10d | 2022-11-04 | 2022-11-17 | 3 |  | 8h |
| 5 | 2.1.2 C#-Matlab communication |  | 10d | 2022-11-18 | 2022-12-01 | 4 |  | 8h |
| 6 | 2.1 Infrastructure testing |  | 20d | 2022-12-02 | 2022-12-29 | 5 |  | 8h |
| 7 | 2.1 software infrastructure complete | milestone | 0d | 2022-12-29 | 2022-12-29 | 6 |  |  |
| 8 | 2.2.1 learn functionality MoSeq |  | 10d | 2022-12-30 | 2023-01-12 | 6 |  | 8h |
| 9 | 2.2.1 install and run MoSeq |  | 5d | 2023-01-13 | 2023-01-19 | 8 |  | 8h |
| 10 | 2.2.1 learn MoSeq code |  | 10d | 2023-01-20 | 2023-02-02 | 9 |  | 8h |
| 11 | 2.2.1 use MoSeq to analyze data |  | 10d | 2023-02-03 | 2023-02-16 | 10 |  | 8h |
| 12 | 2.2.1 integrate MoSeq into Bonsai |  | 10d | 2023-02-17 | 2023-03-02 | 11 |  | 8h |
| 13 | 2.2.1 MoSeq integration complete | milestone | 0d | 2023-03-02 | 2023-03-02 | 12 |  |  |
| 14 | 2.2.1 learn functionality of BehaveNet |  | 10d | 2023-03-03 | 2023-03-16 | 12 |  | 8h |
| 15 | 2.2.1 learn BehaveNet code |  | 10d | 2023-03-17 | 2023-03-30 | 14 |  | 8h |
| 16 | 2.2.1 use BehaveNet to analyze data |  | 10d | 2023-03-31 | 2023-04-13 | 15 |  | 8h |
| 17 | 2.2.1 integrate BehaveNet into Bonsai |  | 10d | 2023-04-14 | 2023-04-27 | 16 |  | 8h |
| 18 | 2.2.1 BehaveNet integration complete | milestone | 0d | 2023-04-27 | 2023-04-27 | 17 |  |  |
| 19 | 2.2.2.2 learn LDS |  | 10d | 2023-04-28 | 2023-05-11 | 17 |  | 8h |
| 20 | 2.2.2.2 understand GLDS R code |  | 10d | 2023-05-12 | 2023-05-25 | 19 |  | 8h |
| 21 | 2.2.2.2 use GLDS to analyze neural data |  | 10d | 2023-05-26 | 2023-06-08 | 20 |  | 8h |
| 22 | 2.2.2.2 integrate GLDS into Bonsai |  | 20d | 2023-06-09 | 2023-07-06 | 21 |  | 8h |
| 23 | 2.2.2.2 GLDS integration complete | milestone | 0d | 2023-07-06 | 2023-07-06 | 22 |  |  |
| 24 | 2.2.2.2 understand PLDS Matlab code |  | 10d | 2023-07-07 | 2023-07-20 | 22 |  | 8h |
